Schedule from MS Project, 2022-05-02 to 2022-08-02, costs in ¥, A marks actual dates.

## Calendars

- 标准: Mon-Fri 08:00-12:00, 13:00-17:00; Sat-Sun off.

## Resources

| Resource | Rate |
| --- | --- |
| 项目经理 | 25 |
| 系统架构师 | 22.5 |
| 需求分析师 | 15 |
| 系统分析师 | 18.75 |
| 软件设计师2 | 18.75 |
| 软件工程师3 | 18.75 |
| 测试经理 | 22.5 |
| 测试工程师2 | 15 |
| 软件工程师2 | 18.75 |
| 软件工程师1 | 18.75 |
| 测试工程师1 | 15 |
| 软件设计师1 | 18.75 |
| 运维工程师 | 16.25 |

## Schedule

| ID | WBS | Task | Duration | Start | Finish | Predecessors | Complete | Resources | Work | Actual work | Cost | Actual cost |
| --- | --- | --- | --- | --- | --- | --- | --- | --- | --- | --- | --- | --- |
| 1 | 1 | **需求分析** | 7d | 2022-05-02 A | 2022-05-10 A |  | 100% |  | 56h | 56h | 1,020 | 1,020 |
| 2 | 1.1 | 需求开发 | 2d | 2022-05-02 A | 2022-05-03 A |  | 100% | 需求分析师 | 16h | 16h | 240 | 240 |
| 3 | 1.2 | 需求管理 | 2d | 2022-05-04 A | 2022-05-05 A | 2 | 100% | 需求分析师 | 16h | 16h | 240 | 240 |
| 4 | 1.3 | 系统测试计划编制 | 3d | 2022-05-06 A | 2022-05-10 A | 3 | 100% | 测试经理 | 24h | 24h | 540 | 540 |
| 5 | 2 | **总体设计** | 10d | 2022-05-11 A | 2022-05-24 A | 4 | 100% |  | 80h | 80h | 1,760 | 1,760 |
| 6 | 2.1 | 策略确定 | 1d | 2022-05-11 A | 2022-05-11 A |  | 100% | 项目经理 | 8h | 8h | 200 | 200 |
| 7 | 2.2 | 开发标准确定 | 2d | 2022-05-12 A | 2022-05-13 A | 6 | 100% | 系统分析师 | 16h | 16h | 300 | 300 |
| 8 | 2.3 | 架构设计 | 5d | 2022-05-16 A | 2022-05-20 A | 7 | 100% | 系统架构师 | 40h | 40h | 900 | 900 |
| 9 | 2.4 | 集成测试计划编制 | 2d | 2022-05-23 A | 2022-05-24 A | 8 | 100% | 测试经理 | 16h | 16h | 360 | 360 |
| 10 | 3 | **详细设计** | 23d | 2022-05-25 A | 2022-06-24 A | 5 | 100% |  | 400h | 400h | 7,380 | 7,380 |
| 11 | 3.1 | 接口设计 | 10d | 2022-05-25 A | 2022-06-07 A |  | 100% | 软件设计师1; 软件设计师2 | 160h | 160h | 3,000 | 3,000 |
| 12 | 3.2 | 模块设计 | 9d | 2022-06-08 A | 2022-06-20 A | 11 | 100% | 软件设计师1; 软件设计师2 | 144h | 144h | 2,700 | 2,700 |
| 13 | 3.3 | 单元测试计划编制 | 4d | 2022-06-21 A | 2022-06-24 A | 12 | 100% | 测试工程师1; 测试工程师2; 测试经理 | 96h | 96h | 1,680 | 1,680 |
| 14 | 4 | **代码实现** | 17d | 2022-06-27 A | 2022-07-19 A | 10 | 100% |  | 408h | 408h | 7,650 | 7,650 |
| 15 | 4.1 | 编码 | 10d | 2022-06-27 A | 2022-07-08 A |  | 100% | 软件工程师1; 软件工程师2; 软件工程师3 | 240h | 240h | 4,500 | 4,500 |
| 16 | 4.2 | 代码复核 | 3d | 2022-07-11 A | 2022-07-13 A | 15 | 100% | 软件工程师1; 软件工程师2; 软件工程师3 | 72h | 72h | 1,350 | 1,350 |
| 17 | 4.3 | 单元测试 | 4d | 2022-07-14 A | 2022-07-19 A | 16 | 100% | 软件工程师1; 软件工程师2; 软件工程师3 | 96h | 96h | 1,800 | 1,800 |
| 18 | 5 | **测试** | 8d | 2022-07-20 A | 2022-07-29 A | 14 | 100% |  | 144h | 144h | 2,280 | 2,280 |
| 19 | 5.1 | 集成测试 | 2d | 2022-07-20 A | 2022-07-21 A |  | 100% | 测试工程师1; 测试工程师2 | 32h | 32h | 480 | 480 |
| 20 | 5.2 | 系统测试 | 2d | 2022-07-22 A | 2022-07-25 A | 19 | 100% | 测试工程师1; 测试工程师2 | 32h | 32h | 480 | 480 |
| 21 | 5.3 | 测试总结 | 2d | 2022-07-26 A | 2022-07-27 A | 20 | 100% | 测试工程师1; 测试工程师2; 测试经理 | 48h | 48h | 840 | 840 |
| 22 | 5.4 | Bug跟踪 | 2d | 2022-07-28 A | 2022-07-29 A | 21 | 100% | 测试工程师1; 测试工程师2 | 32h | 32h | 480 | 480 |
| 23 | 6 | **交付** | 2d | 2022-08-01 A | 2022-08-02 A | 18 | 100% |  | 16h | 16h | 310 | 310 |
| 24 | 6.1 | 验收测试 | 1d | 2022-08-01 A | 2022-08-01 A |  | 100% | 测试经理 | 8h | 8h | 180 | 180 |
| 25 | 6.2 | 产品发布 | 1d | 2022-08-02 A | 2022-08-02 A | 24 | 100% | 运维工程师 | 8h | 8h | 130 | 130 |
